# APP_BACH2_Plan_2003

Schedule from MS Project, 2013-03-07 to 2014-07-18, A marks actual dates.

## Calendars

- 標準: Mon-Fri 08:00-12:00, 13:00-17:00; Sat-Sun off.

## Resources

| Resource |
| --- |
| Celia |
| Jack |
| Jenny |
| QCS Only |
| v |
| Sammi Yao |
| Jack.Huang |
| Jenny.Gao |

## Schedule

| ID | WBS | Task | Type | Duration | Start | Finish | Predecessors | Complete | Remaining | Baseline start | Baseline finish | Baseline duration | Total slack | Free slack | Constraint | Resources | Work | Actual work | Text1 | Text2 | Text3 | Text4 | Text5 | Text6 | Text7 |
| --- | --- | --- | --- | --- | --- | --- | --- | --- | --- | --- | --- | --- | --- | --- | --- | --- | --- | --- | --- | --- | --- | --- | --- | --- | --- |
| 1 | 1 | **APP for BACH 2.0 Project Plan** |  | 357d? | 2013-03-07 A | 2014-07-18 |  | 32% | 242.73d? | 2013-03-07 | 2014-06-23 | 338d? | 6d |  |  | Jack.Huang | 26263.2h | 2087.6h | PM | Middle | PES阶段 | 文档撰写 | 全新功能/全新逻辑 | Other | Other |
| 2 | 1.1 | **Milestone** |  | 357d | 2013-03-07 A | 2014-07-18 |  |  | 357d | 2013-03-07 | 2014-06-23 | 338d | 0d |  |  | Jack.Huang | 2856h |  | PM | Middle | 上线实施阶段 | Other | 全新功能/全新逻辑 | Other | Other |
| 3 | 1.1.1 | Project Kick-Off | milestone | 0d | 2013-03-07 A | 2013-03-07 A |  | 100% |  | 2013-03-07 | 2013-03-07 | 0d |  |  | start no earlier than 2013-03-07 | Jack.Huang |  |  | PM | Low | PES阶段 | 文档撰写 | 全新功能/全新逻辑 | Other | Other |
| 4 | 1.1.2 | Analysis Result Report | milestone | 0d | 2013-09-13 | 2013-09-13 | 26 |  |  | 2013-08-07 | 2013-08-07 | 0d | 226d |  |  | Jack.Huang |  |  | PM | Middle | PES阶段 | 文档撰写 | 全新功能/全新逻辑 | Other | Other |
| 5 | 1.1.3 | PES finished | milestone | 0d | 2013-12-02 | 2013-12-02 | 29 |  |  | 2013-09-05 | 2013-09-05 | 0d | 170d |  |  | Jack.Huang |  |  | PM | Low | PES阶段 | 文档撰写 | 全新功能/全新逻辑 | Other | Other |
| 6 | 1.1.4 | Prototype Confirmed | milestone | 0d | 2014-02-19 | 2014-02-19 | 30 |  |  | 2013-11-26 | 2013-11-26 | 0d | 113d |  |  | Jack.Huang |  |  | PM | Middle | PES阶段 | 文档撰写 | 全新功能/全新逻辑 | Other | Other |
| 7 | 1.1.5 | Coding Finished | milestone | 0d | 2014-04-30 | 2014-04-30 | 132 |  |  | 2014-04-03 | 2014-04-03 | 0d | 57d |  |  | Jack.Huang |  |  | PM | Middle | 开发阶段 | Business Coding | 全新功能/全新逻辑 | Other | Other |
| 8 | 1.1.6 | QA Test Finished | milestone | 0d | 2014-05-02 | 2014-05-02 | 233 |  |  | 2014-04-07 | 2014-04-07 | 0d | 55d |  |  | Jack.Huang |  |  | PM | Middle | 测试阶段 | 功能测试 | 全新功能/全新逻辑 | Other | Other |
| 9 | 1.1.7 | PM Test Finished | milestone | 0d | 2014-05-29 | 2014-05-29 | 234 |  |  | 2014-05-02 | 2014-05-02 | 0d | 36d |  |  | Jack.Huang |  |  | PM | Middle | 测试阶段 | 功能测试 | 全新功能/全新逻辑 | Other | Other |
| 10 | 1.1.8 | User Test Finished | milestone | 0d | 2014-07-07 | 2014-07-07 | 237 |  |  | 2014-06-10 | 2014-06-10 | 0d | 9d |  |  | Jack.Huang |  |  | PM | Middle | 测试阶段 | 功能测试 | 全新功能/全新逻辑 | Other | Other |
| 11 | 1.1.9 | Go Live | milestone | 0d | 2014-07-18 | 2014-07-18 | 247 |  |  | 2014-06-23 | 2014-06-23 | 0d | 0d |  |  | Jack.Huang |  |  | PM | Middle | 上线实施阶段 | Other | 全新功能/全新逻辑 | Other | Other |
| 12 | 1.2 | **Requirement Confirmation** |  | 247d | 2013-03-12 A | 2014-02-19 |  | 85% | 36.11d | 2013-03-12 | 2013-11-26 | 186d | 107d |  |  | Jack.Huang | 3968h | 1768h | PM | Middle | PES阶段 | 文档撰写 | 全新功能/全新逻辑 | Other | Other |
| 13 | 1.2.1 | **Pre-Work (Scope confirm)** |  | 89d | 2013-03-12 A | 2013-07-12 A |  | 100% |  | 2013-03-12 | 2013-07-12 | 89d |  |  |  | Jack.Huang | 992h | 992h | PM | Middle | PES阶段 | 文档撰写 | 全新功能/全新逻辑 | Other | Other |
| 14 | 1.2.1.1 | Source & Documents collection |  | 1d | 2013-03-12 A | 2013-03-12 A |  | 100% |  | 2013-03-12 | 2013-03-12 | 1d |  |  |  | Celia; Jack | 16h | 16h | SE | Middle | PES阶段 | 文档撰写 | 全新功能/全新逻辑 | Other | Other |
| 15 | 1.2.1.2 | QCS system study |  | 19d | 2013-03-13 A | 2013-04-08 A | 14 | 100% |  | 2013-03-13 | 2013-04-08 | 19d |  |  |  | Jack.Huang | 152h | 152h | PM | Middle | PES阶段 | Study | 全新功能/全新逻辑 | Other | Other |
| 16 | 1.2.1.3 | Obsolete functions investigation |  | 6d | 2013-04-02 A | 2013-04-09 A | 14 | 100% |  | 2013-04-02 | 2013-04-09 | 6d |  |  | start no earlier than 2013-04-02 | Celia; Jack | 96h | 96h | PM | Middle | PES阶段 | 文档撰写 | 全新功能/全新逻辑 | Other | Other |
| 17 | 1.2.1.4 | Review with QCS ITS |  | 1d | 2013-04-10 A | 2013-04-10 A | 15, 16 | 100% |  | 2013-04-10 | 2013-04-10 | 1d |  |  |  | Celia; Jack | 16h | 16h | PM | Middle | PES阶段 | Review | 全新功能/全新逻辑 | Other | Other |
| 18 | 1.2.1.5 | Confirm SD resource |  | 20d | 2013-05-30 A | 2013-06-26 A | 17 | 100% |  | 2013-05-30 | 2013-06-26 | 20d |  |  | finish no earlier than 2013-06-26 | Jenny.Gao |  |  | SE | Middle | PES阶段 | 文档撰写 | 全新功能/全新逻辑 | Other | Other |
| 19 | 1.2.1.6 | Source Comparison |  | 12d | 2013-06-27 A | 2013-07-12 A | 18 | 100% |  | 2013-06-27 | 2013-07-12 | 12d |  |  | finish no earlier than 2013-07-12 | Jenny.Gao |  |  | SE | Middle | PES阶段 | 文档撰写 | 全新功能/全新逻辑 | Other | Other |
| 20 | 1.2.2 | **GAP_Analysis** |  | 45d | 2013-07-15 A | 2013-09-13 A |  | 100% |  | 2013-07-15 | 2013-08-07 | 18d |  |  |  | Jenny.Gao | 488h | 488h | SD | Middle | PES阶段 | 文档撰写 | 全新功能/全新逻辑 | Other | Other |
| 21 | 1.2.2.1 | Source Comparison Result |  | 35d | 2013-07-15 A | 2013-08-30 A | 13 | 100% |  | 2013-07-15 | 2013-07-26 | 10d |  |  | finish no earlier than 2013-08-30 | Jack.Huang |  |  | PM | Middle | PES阶段 | 文档撰写 | 全新功能/全新逻辑 | Other | Other |
| 22 | 1.2.2.2 | Review with QCS ITS 1 |  | 1d | 2013-08-30 A | 2013-08-30 A |  | 100% |  |  |  |  |  |  | start no earlier than 2013-08-30 | Celia; Jack | 16h | 16h | SE | Middle | PES阶段 | Review | 全新功能/全新逻辑 | Other | Other |
| 23 | 1.2.2.3 | UI Integration |  | 3d | 2013-09-02 A | 2013-09-04 A | 21 | 100% |  | 2013-07-29 | 2013-07-30 | 2d |  |  |  | Jack.Huang |  |  | PM | Middle | PES阶段 | 文档撰写 | 全新功能/全新逻辑 | Other | Other |
| 24 | 1.2.2.4 | Procedure Integration |  | 7d | 2013-09-05 A | 2013-09-13 A | 23 | 100% |  | 2013-07-31 | 2013-08-02 | 3d |  |  |  | Jack.Huang | 56h | 56h | PM | Middle | PES阶段 | 文档撰写 | 全新功能/全新逻辑 | Other | Other |
| 25 | 1.2.2.5 | Table Schema Integration |  | 5d | 2013-09-02 A | 2013-09-06 A | 24 | 100% |  | 2013-08-05 | 2013-08-06 | 2d |  |  |  | Jack.Huang | 40h | 40h | SE | Middle | PES阶段 | 文档撰写 | 全新功能/全新逻辑 | Other | Other |
| 26 | 1.2.2.6 | Review with QCS ITS 2 |  | 1d | 2013-09-13 A | 2013-09-13 A | 25 | 100% |  | 2013-08-07 | 2013-08-07 | 1d |  |  | start no earlier than 2013-09-13 | Celia; Jack | 16h | 16h | SE | Middle | PES阶段 | Review | 全新功能/全新逻辑 | Other | Other |
| 27 | 1.2.3 | 共用業務邏輯(Services) |  | 35d | 2013-09-16 A | 2013-11-01 A | 26 | 100% |  | 2013-08-08 | 2013-08-14 | 5d |  |  | finish no earlier than 2013-11-01 | Jack.Huang | 280h | 280h | SE | Middle | PES阶段 | 文档撰写 | 全新功能/全新逻辑 | Other | Other |
| 28 | 1.2.4 | PES Preparation |  | 20d | 2013-11-04 A | 2013-11-29 | 20 |  | 20d | 2013-08-08 | 2013-09-04 | 20d | 164d | 0d | finish no earlier than 2013-11-22 | Jack.Huang | 160h |  | SE | Middle | PES阶段 | 文档撰写 | 全新功能/全新逻辑 | Other | Other |
| 29 | 1.2.5 | PES Review |  | 1d | 2013-12-02 | 2013-12-02 | 28 |  |  | 2013-09-05 | 2013-09-05 | 1d | 164d | 0d |  | Celia; Jack; Jenny | 24h |  | SE | Low | PES阶段 | Review | 全新功能/全新逻辑 | Other | Other |

Notes:
- 15: 1. QCS 特有Function / 2
- 16: 那些Function 不用

| ID | WBS | Task | Type | Duration | Start | Finish | Predecessors | Complete | Remaining | Baseline start | Baseline finish | Baseline duration | Total slack | Free slack | Resources | Work | Actual work | Text1 | Text2 | Text3 | Text4 | Text5 | Text6 | Text7 |
| --- | --- | --- | --- | --- | --- | --- | --- | --- | --- | --- | --- | --- | --- | --- | --- | --- | --- | --- | --- | --- | --- | --- | --- | --- |
| 30 | 1.2.6 | **New System Prototype Confirm** |  | 2d | 2014-02-18 | 2014-02-19 |  |  |  | 2013-11-25 | 2013-11-26 | 2d | 107d | 0d | Jenny.Gao | 48h |  | SE | Low | PES阶段 | 文档撰写 | 全新功能/全新逻辑 | Other | Other |
| 31 | 1.2.6.1 | QCS site confirm |  | 2d | 2014-02-18 | 2014-02-19 | 128 |  |  | 2013-11-25 | 2013-11-26 | 2d | 107d |  | Celia | 16h |  | SE | Low | PES阶段 | 文档撰写 | 全新功能/全新逻辑 | Other | Other |
| 32 | 1.2.6.2 | QTY site confirm |  | 2d | 2014-02-18 | 2014-02-19 | 128 |  |  | 2013-11-25 | 2013-11-26 | 2d | 107d |  | Jack.Huang | 16h |  | SE | Low | PES阶段 | 文档撰写 | 全新功能/全新逻辑 | Other | Other |
| 33 | 1.3 | **System Design** |  | 81d? | 2013-11-04 A | 2014-02-24 |  | 29% | 57.28d? | 2013-08-15 | 2013-12-02 | 78d | 104d |  | Jack.Huang | 3247.2h | 319.6h | SE | Middle | 设计阶段 | 文档撰写 | 全新功能/全新逻辑 | Other | Other |
| 34 | 1.3.1 | **System Study & PIS** |  | 65d? | 2013-11-04 A | 2014-01-31 |  | 38% | 40.37d? | 2013-08-15 | 2013-11-08 | 62d | 120d |  | Jack.Huang | 1951.2h | 319.6h | SE | Middle | 设计阶段 | 文档撰写 | 全新功能/全新逻辑 | Other | Other |
| 35 | 1.3.1.1 | **共用業務邏輯(Services)** |  | 10.95d? | 2013-11-04 A | 2013-11-18 |  | 96% | 0.4d? | 2013-08-15 | 2013-08-28 | 10d | 174.05d |  | Jack.Huang | 419.2h | 319.6h | SE | Middle | 设计阶段 | Study | 全新功能/全新逻辑 | Other | Other |
| 36 | 1.3.1.1.1 | Journal Grid |  | 1d | 2013-11-04 | 2013-11-04 | 27 |  |  | 2013-08-15 | 2013-08-15 | 1d | 184d |  | Jenny.Gao | 8h |  | SE | Middle | 设计阶段 | Study | 全新功能/全新逻辑 | Other | Other |
| 37 | 1.3.1.1.2 | ACP VP booking |  | 2d | 2013-11-05 A | 2013-11-06 A |  | 100% |  |  |  |  |  |  | Jenny.Gao | 16h | 16h | SE | Middle | 设计阶段 | Study | 全新功能/全新逻辑 | Other | Other |
| 38 | 1.3.1.1.3 | APP AP booking |  | 3d | 2013-11-07 A | 2013-11-11 A |  | 100% |  |  |  |  |  |  | Jenny.Gao | 24h | 24h | SE | Middle | 设计阶段 | Study | 全新功能/全新逻辑 | Other | Other |
| 39 | 1.3.1.1.4 | GUI control |  | 4.95d | 2013-11-12 A | 2013-11-18 A |  | 100% |  | 2013-08-19 | 2013-08-19 | 0.5d |  |  | Jenny.Gao | 39.6h | 39.6h | SE | Middle | 设计阶段 | Study | 全新功能/全新逻辑 | Other | Other |
| 40 | 1.3.1.1.5 | Tax Rate control |  | 5d | 2013-11-05 A | 2013-11-11 A |  | 100% |  | 2013-08-19 | 2013-08-19 | 0.5d |  |  | Jenny.Gao | 40h | 40h | SE | Middle | 设计阶段 | Study | 全新功能/全新逻辑 | Other | Other |
| 41 | 1.3.1.1.6 | Get STD Cost Information |  | 5d | 2013-11-05 A | 2013-11-11 A |  | 100% |  | 2013-08-20 | 2013-08-20 | 0.5d |  |  | Jenny.Gao | 40h | 40h | SE | Middle | 设计阶段 | Study | 全新功能/全新逻辑 | Other | Other |
| 42 | 1.3.1.1.7 | Vendor Information |  | 5d | 2013-11-05 A | 2013-11-11 A | 41 | 100% |  | 2013-08-20 | 2013-08-28 | 6.5d |  |  | Jenny.Gao | 40h | 40h | SE | Middle | 设计阶段 | Study | 全新功能/全新逻辑 | Other | Other |
| 43 | 1.3.1.1.8 | Exchange Rate |  | 0.5d | 2013-11-12 | 2013-11-12 | 42 |  |  |  |  |  | 184.5d |  | Jenny.Gao | 4h |  | SE | Middle | 设计阶段 | Study | 全新功能/全新逻辑 | Other | Other |
| 44 | 1.3.1.1.9 | Payment Term Control |  | 5d | 2013-11-05 A | 2013-11-11 A |  | 100% |  |  |  |  |  |  | Jenny.Gao | 40h | 40h | SE | Middle | 设计阶段 | Study | 全新功能/全新逻辑 | Other | Other |
| 45 | 1.3.1.1.10 | Payment Term Control |  | 5d | 2013-11-05 A | 2013-11-11 A | 43 | 100% |  |  |  |  |  |  | Jenny.Gao | 40h | 40h | SE | Middle | 设计阶段 | Study | 全新功能/全新逻辑 | Other | Other |
| 46 | 1.3.1.1.11 | Discount Information |  | 5d? | 2013-11-05 A | 2013-11-11 A | 45 | 100% |  |  |  |  |  |  | Jenny.Gao | 40h | 40h | SE | Middle | 设计阶段 | Study | 全新功能/全新逻辑 | Other | Other |
| 47 | 1.3.1.2 | **Maintain - Study** |  | 4d | 2013-11-11 | 2013-11-15 | 46 |  |  | 2013-09-06 | 2013-09-18 | 8.5d | 0d |  | Jenny.Gao | 64h |  | SE | Low | 设计阶段 | Study | 全新功能/全新逻辑 | Other | Maintain |
| 48 | 1.3.1.2.1 | Account Table |  | 0.5d | 2013-11-12 | 2013-11-12 |  |  |  | 2013-09-06 | 2013-09-06 | 1d | 0d |  | Jenny.Gao | 4h |  | SE | Low | 设计阶段 | Study | 全新功能/全新逻辑 | Other | Maintain |
| 49 | 1.3.1.2.2 | Tax Rate Code |  | 0.5d | 2013-11-12 | 2013-11-12 | 48 |  |  | 2013-09-09 | 2013-09-09 | 1d | 0d |  | Jenny.Gao | 4h |  | SD | Low | 设计阶段 | Study | 全新功能/全新逻辑 | Other | Maintain |
| 50 | 1.3.1.2.3 | System Parameter |  | 0.5d | 2013-11-13 | 2013-11-13 | 49 |  |  | 2013-09-10 | 2013-09-10 | 1d | 0d |  | Jenny.Gao | 4h |  | SE | Low | 设计阶段 | Study | 全新功能/全新逻辑 | Other | Maintain |
| 51 | 1.3.1.2.4 | Trace Period Maintain | milestone | 0d | 2013-11-11 | 2013-11-11 |  |  |  | 2013-09-11 | 2013-09-11 | 1d | 185d |  | QCS Only |  |  | SE | Low | 设计阶段 | Study | 全新功能/全新逻辑 | Other | Maintain |
| 52 | 1.3.1.2.5 | Discount Vendor Master |  | 0.5d | 2013-11-13 | 2013-11-13 | 50 |  |  | 2013-09-12 | 2013-09-12 | 1d | 0d |  | Jenny.Gao | 4h |  | SD | Low | 设计阶段 | Study | 全新功能/全新逻辑 | Other | Maintain |
| 53 | 1.3.1.2.6 | Facility/Dept. Mapping |  | 0.5d | 2013-11-14 | 2013-11-14 | 52 |  |  | 2013-09-13 | 2013-09-16 | 1.5d | 0d |  | Jenny.Gao | 4h |  | SD | Low | 设计阶段 | Study | 全新功能/全新逻辑 | Other | Maintain |
| 54 | 1.3.1.2.7 | Parameter Data Input |  | 0.5d | 2013-11-14 | 2013-11-14 | 53 |  |  | 2013-09-16 | 2013-09-17 | 1d | 0d |  | Jenny.Gao | 4h |  | SD | Low | 设计阶段 | Study | 全新功能/全新逻辑 | Other | Maintain |
| 55 | 1.3.1.2.8 | AP Report Raw Data Collection |  | 1d | 2013-11-15 | 2013-11-15 | 54 |  |  | 2013-09-17 | 2013-09-18 | 1d | 0d |  | Jenny.Gao | 8h |  | SE | Low | 设计阶段 | Study | 全新功能/全新逻辑 | Other | Maintain |

Notes:
- 39: for discount

| ID | WBS | Task | Type | Duration | Start | Finish | Predecessors | Baseline start | Baseline finish | Baseline duration | Total slack | Free slack | Resources | Work | Text1 | Text2 | Text3 | Text4 | Text5 | Text6 | Text7 |
| --- | --- | --- | --- | --- | --- | --- | --- | --- | --- | --- | --- | --- | --- | --- | --- | --- | --- | --- | --- | --- | --- |
| 56 | 1.3.1.3 | **Process -Study** |  | 8.5d | 2013-11-18 | 2013-11-28 |  | 2013-09-18 | 2013-10-23 | 25.5d | 0d |  | Jenny.Gao | 148h | SE | Low | 设计阶段 | Study | 全新功能/全新逻辑 | Other | Process |
| 57 | 1.3.1.3.1 | Payment price confirm trigger |  | 1d | 2013-11-18 | 2013-11-18 | 55 | 2013-09-18 | 2013-09-20 | 2d | 0d |  | Jenny.Gao | 8h | SE | Low | 设计阶段 | Study | 全新功能/全新逻辑 | Other | Process |
| 58 | 1.3.1.3.2 | Frozen Cpcr Information for Month-End | milestone | 0d | 2013-11-18 | 2013-11-18 | 57 | 2013-09-20 | 2013-09-23 | 1d | 0d |  | QCS Only |  | SE | Low | 设计阶段 | Study | 全新功能/全新逻辑 | Other | Process |
| 59 | 1.3.1.3.3 | Frozen Un-Posted APH for Month-End | milestone | 0d | 2013-11-18 | 2013-11-18 | 58 | 2013-09-23 | 2013-09-24 | 1d | 0d |  | QCS Only |  | SE | Low | 设计阶段 | Study | 全新功能/全新逻辑 | Other | Process |
| 60 | 1.3.1.3.4 | Customs Declaration Accept | milestone | 0d | 2013-11-18 | 2013-11-18 | 59 | 2013-09-24 | 2013-09-24 | 0d | 0d |  | QCS Only |  | SE | Low | 设计阶段 | Study | 全新功能/全新逻辑 | Other | Process |
| 61 | 1.3.1.3.5 | AP Balance Month-End |  | 0.5d | 2013-11-19 | 2013-11-19 | 60 | 2013-09-24 | 2013-09-25 | 1d | 0d |  | Jenny.Gao | 4h | SE | Low | 设计阶段 | Study | 全新功能/全新逻辑 | Other | Process |
| 62 | 1.3.1.3.6 | Manual Control For Batch |  | 1d | 2013-11-19 | 2013-11-20 | 61 | 2013-09-30 | 2013-10-01 | 1d | 0d |  | Jenny.Gao | 8h | SE | Low | 设计阶段 | Study | 全新功能/全新逻辑 | Other | Process |
| 63 | 1.3.1.3.7 | Transaction Error Recover Process |  | 1d | 2013-11-20 | 2013-11-21 | 62 | 2013-10-01 | 2013-10-03 | 2d | 0d |  | Jenny.Gao | 8h | SE | Low | 设计阶段 | Study | 全新功能/全新逻辑 | Other | Process |
| 64 | 1.3.1.3.8 | White List Accept | milestone | 0d | 2013-11-21 | 2013-11-21 | 63 | 2013-10-03 | 2013-10-07 | 2d | 0d |  | QCS Only |  | SE | Low | 设计阶段 | Study | 全新功能/全新逻辑 | Other | Process |
| 65 | 1.3.1.3.9 | Send Vendor EDI | milestone | 0d | 2013-11-21 | 2013-11-21 | 64 | 2013-10-07 | 2013-10-09 | 2d | 0d |  | QCS Only |  | SE | Low | 设计阶段 | Study | 全新功能/全新逻辑 | Other | Process |
| 66 | 1.3.1.3.10 | Notice Sourcer Manager to Approve |  | 0.5d | 2013-11-21 | 2013-11-21 | 65 | 2013-10-14 | 2013-10-14 | 0d | 172.5d | 0d | Jenny.Gao | 4h | SE | Low | 设计阶段 | Study | 全新功能/全新逻辑 | Other | Process |
| 67 | 1.3.1.3.11 | Discount Form Clear |  | 0.5d | 2013-11-22 | 2013-11-22 | 66 | 2013-10-14 | 2013-10-16 | 2d | 166.5d | 0d | Jenny.Gao | 4h | SE | Low | 设计阶段 | Study | 全新功能/全新逻辑 | Other | Process |
| 68 | 1.3.1.3.12 | Change Posted/VR Invoice Number |  | 0.5d | 2013-11-22 | 2013-11-22 | 67 | 2013-10-16 | 2013-10-18 | 2d | 166.5d | 0d | Jenny.Gao | 4h | SE | Low | 设计阶段 | Study | 全新功能/全新逻辑 | Other | Process |
| 69 | 1.3.1.3.13 | Discount Update/Printing |  | 1d | 2013-11-25 | 2013-11-25 | 68 | 2013-10-18 | 2013-10-21 | 1.5d | 166.5d | 0d | Jenny.Gao | 8h | SE | Low | 设计阶段 | Study | 全新功能/全新逻辑 | Other | Process |
| 70 | 1.3.1.3.14 | Invoice Journal Entry |  | 1.5d | 2013-11-26 | 2013-11-27 | 69 | 2013-09-25 | 2013-09-30 | 3d | 166.5d | 0d | Jenny.Gao | 12h | SE | Low | 设计阶段 | Study | 全新功能/全新逻辑 | Other | Process |
| 71 | 1.3.1.3.15 | Posted RT/Invoice Void |  | 1d | 2013-11-27 | 2013-11-28 | 70 | 2013-10-22 | 2013-10-23 | 2d | 166.5d |  | Jenny.Gao | 8h | SE | Low | 设计阶段 | Study | 全新功能/全新逻辑 | Other | Process |
| 72 | 1.3.1.3.16 | Payment Price Discount and Deduct |  | 1.5d | 2013-11-21 | 2013-11-22 | 65 | 2013-10-09 | 2013-10-14 | 3d | 0d |  | Jenny.Gao | 12h | SE | Low | 设计阶段 | Study | 全新功能/全新逻辑 | Other | Process |
| 73 | 1.3.1.4 | **Report -Study** |  | 3d | 2013-11-25 | 2013-11-27 |  | 2013-10-24 | 2013-10-31 | 6d | 0d |  | Jenny.Gao | 48h | SE | Low | 设计阶段 | Study | 全新功能/全新逻辑 | Other | Report |
| 74 | 1.3.1.4.1 | P Trans Not Post Aging Report |  | 0.5d | 2013-11-25 | 2013-11-25 | 72 | 2013-10-24 | 2013-10-24 | 1d | 0d |  | Jenny.Gao | 4h | SE | Low | 设计阶段 | Study | 全新功能/全新逻辑 | Other | Report |
| 75 | 1.3.1.4.2 | AP Balanced Report |  | 0.5d | 2013-11-25 | 2013-11-25 | 74 | 2013-10-25 | 2013-10-25 | 1d | 0d |  | Jenny.Gao | 4h | SE | Low | 设计阶段 | Study | 全新功能/全新逻辑 | Other | Report |
| 76 | 1.3.1.4.3 | Payment Price Confirm Report |  | 0.5d | 2013-11-26 | 2013-11-26 | 75 | 2013-10-28 | 2013-10-28 | 1d | 0d |  | Jenny.Gao | 4h | SE | Low | 设计阶段 | Study | 全新功能/全新逻辑 | Other | Report |
| 77 | 1.3.1.4.4 | Transaction List Report |  | 0.5d | 2013-11-26 | 2013-11-26 | 76 | 2013-10-29 | 2013-10-29 | 1d | 0d |  | Jenny.Gao | 4h | SE | Low | 设计阶段 | Study | 全新功能/全新逻辑 | Other | Report |
| 78 | 1.3.1.4.5 | VP Report By Facility |  | 0.5d | 2013-11-27 | 2013-11-27 | 77 | 2013-10-30 | 2013-10-30 | 1d | 0d |  | Jenny.Gao | 4h | SE | Low | 设计阶段 | Study | 全新功能/全新逻辑 | Other | Report |
| 79 | 1.3.1.4.6 | Vendor Transaction List |  | 0.5d | 2013-11-27 | 2013-11-27 | 78 | 2013-10-31 | 2013-10-31 | 1d | 0d |  | Jenny.Gao | 4h | SE | Low | 设计阶段 | Study | 全新功能/全新逻辑 | Other | Report |

| ID | WBS | Task | Type | Duration | Start | Finish | Predecessors | Baseline start | Baseline finish | Baseline duration | Total slack | Free slack | Constraint | Resources | Work | Text1 | Text2 | Text3 | Text4 | Text5 | Text6 | Text7 |
| --- | --- | --- | --- | --- | --- | --- | --- | --- | --- | --- | --- | --- | --- | --- | --- | --- | --- | --- | --- | --- | --- | --- |
| 80 | 1.3.1.5 | **Maintain - PIS** |  | 10d | 2013-11-28 | 2013-12-11 |  | 2013-09-06 | 2013-09-18 | 8.5d | 0d |  |  | Jenny.Gao | 160h | SE | Low | 设计阶段 | 文档撰写 | 全新功能/全新逻辑 | Other | Maintain |
| 81 | 1.3.1.5.1 | Account Table |  | 1d | 2013-11-28 | 2013-11-28 | 79 | 2013-09-06 | 2013-09-06 | 1d | 0d |  | start no earlier than 2013-11-18 | Jenny.Gao | 8h | SE | Low | 设计阶段 | 文档撰写 | 全新功能/全新逻辑 | Other | Maintain |
| 82 | 1.3.1.5.2 | Tax Rate Code |  | 1d | 2013-11-29 | 2013-11-29 | 81 | 2013-09-09 | 2013-09-09 | 1d | 0d |  |  | Jenny.Gao | 8h | SE | Low | 设计阶段 | 文档撰写 | 全新功能/全新逻辑 | Other | Maintain |
| 83 | 1.3.1.5.3 | System Parameter |  | 1d | 2013-12-02 | 2013-12-02 | 82 | 2013-09-10 | 2013-09-10 | 1d | 0d |  |  | Jenny.Gao | 8h | SE | Low | 设计阶段 | 文档撰写 | 全新功能/全新逻辑 | Other | Maintain |
| 84 | 1.3.1.5.4 | Trace Period Maintain |  | 1d | 2013-12-03 | 2013-12-03 | 83 | 2013-09-11 | 2013-09-11 | 1d | 0d |  |  | QCS Only | 8h | SE | Low | 设计阶段 | 文档撰写 | 全新功能/全新逻辑 | Other | Maintain |
| 85 | 1.3.1.5.5 | Discount Vendor Master |  | 2d | 2013-12-04 | 2013-12-05 | 84 | 2013-09-12 | 2013-09-12 | 1d | 0d |  | finish no earlier than 2013-11-22 | Jenny.Gao | 16h | SE | Low | 设计阶段 | 文档撰写 | 全新功能/全新逻辑 | Other | Maintain |
| 86 | 1.3.1.5.6 | Facility/Dept. Mapping |  | 2d | 2013-12-06 | 2013-12-09 | 85 | 2013-09-13 | 2013-09-16 | 1.5d | 0d |  |  | Jenny.Gao | 16h | SE | Low | 设计阶段 | 文档撰写 | 全新功能/全新逻辑 | Other | Maintain |
| 87 | 1.3.1.5.7 | Parameter Data Input |  | 1d | 2013-12-10 | 2013-12-10 | 86 | 2013-09-16 | 2013-09-17 | 1d | 0d |  |  | Jenny.Gao | 8h | SE | Low | 设计阶段 | 文档撰写 | 全新功能/全新逻辑 | Other | Maintain |
| 88 | 1.3.1.5.8 | AP Report Raw Data Collection |  | 1d | 2013-12-11 | 2013-12-11 | 87 | 2013-09-17 | 2013-09-18 | 1d | 0d |  |  | Jenny.Gao | 8h | SE | Low | 设计阶段 | 文档撰写 | 全新功能/全新逻辑 | Other | Maintain |
| 89 | 1.3.1.6 | **Process -PIS** |  | 25d | 2013-12-12 | 2014-01-15 |  | 2013-09-18 | 2013-10-23 | 25.5d | 0d |  |  | Jenny.Gao | 400h | SE | Low | 设计阶段 | 文档撰写 | 全新功能/全新逻辑 | Other | Process |
| 90 | 1.3.1.6.1 | Payment price confirm trigger |  | 2d | 2013-12-12 | 2013-12-13 | 88 | 2013-09-18 | 2013-09-20 | 2d | 0d |  |  | Jenny.Gao | 16h | SE | Middle | 设计阶段 | 文档撰写 | 全新功能/全新逻辑 | Other | Process |
| 91 | 1.3.1.6.2 | Frozen Cpcr Information for Month-End | milestone | 0d | 2013-12-13 | 2013-12-13 | 90 | 2013-09-20 | 2013-09-23 | 1d | 0d |  |  | QCS Only |  | SE | Middle | 设计阶段 | 文档撰写 | 全新功能/全新逻辑 | Other | Process |
| 92 | 1.3.1.6.3 | Frozen Un-Posted APH for Month-End | milestone | 0d | 2013-12-13 | 2013-12-13 | 91 | 2013-09-23 | 2013-09-24 | 1d | 0d |  |  | QCS Only |  | SE | Middle | 设计阶段 | 文档撰写 | 全新功能/全新逻辑 | Other | Process |
| 93 | 1.3.1.6.4 | Customs Declaration Accept | milestone | 0d | 2013-12-13 | 2013-12-13 | 92 | 2013-09-24 | 2013-09-24 | 0d | 0d |  |  | QCS Only |  | SE | Middle | 设计阶段 | 文档撰写 | 全新功能/全新逻辑 | Other | Process |
| 94 | 1.3.1.6.5 | AP Balance Month-End |  | 1d | 2013-12-16 | 2013-12-16 | 93 | 2013-09-24 | 2013-09-25 | 1d | 0d |  |  | Jenny.Gao | 8h | SE | Middle | 设计阶段 | 文档撰写 | 全新功能/全新逻辑 | Other | Process |
| 95 | 1.3.1.6.6 | Manual Control For Batch |  | 2d | 2013-12-17 | 2013-12-18 | 94 | 2013-09-30 | 2013-10-01 | 1d | 0d |  |  | Jenny.Gao | 16h | SE | Middle | 设计阶段 | 文档撰写 | 全新功能/全新逻辑 | Other | Process |
| 96 | 1.3.1.6.7 | Transaction Error Recover Process |  | 2d | 2013-12-19 | 2013-12-20 | 95 | 2013-10-01 | 2013-10-03 | 2d | 0d |  |  | Jenny.Gao | 16h | SE | Middle | 设计阶段 | 文档撰写 | 全新功能/全新逻辑 | Other | Process |
| 97 | 1.3.1.6.8 | White List Accept | milestone | 0d | 2013-12-20 | 2013-12-20 | 96 | 2013-10-03 | 2013-10-07 | 2d | 156d | 0d |  | QCS Only |  | SE | Middle | 设计阶段 | 文档撰写 | 全新功能/全新逻辑 | Other | Process |
| 98 | 1.3.1.6.9 | Send Vendor EDI | milestone | 0d | 2013-12-20 | 2013-12-20 | 97 | 2013-10-07 | 2013-10-09 | 2d | 156d |  |  | QCS Only |  | SE | Middle | 设计阶段 | 文档撰写 | 全新功能/全新逻辑 | Other | Process |
| 99 | 1.3.1.6.10 | Notice Sourcer Manager to Approve |  | 1d | 2013-12-23 | 2013-12-23 | 96 | 2013-10-14 | 2013-10-14 | 0d | 0d |  |  | Jenny.Gao | 8h | SE | Middle | 设计阶段 | 文档撰写 | 全新功能/全新逻辑 | Other | Process |
| 100 | 1.3.1.6.11 | Discount Form Clear |  | 1d | 2013-12-24 | 2013-12-24 | 99 | 2013-10-14 | 2013-10-16 | 2d | 0d |  |  | Jenny.Gao | 8h | SE | Middle | 设计阶段 | 文档撰写 | 全新功能/全新逻辑 | Other | Process |
| 101 | 1.3.1.6.12 | Change Posted/VR Invoice Number |  | 1d | 2013-12-25 | 2013-12-25 | 100 | 2013-10-16 | 2013-10-18 | 2d | 0d |  |  | Jenny.Gao | 8h | SE | Middle | 设计阶段 | 文档撰写 | 全新功能/全新逻辑 | Other | Process |
| 102 | 1.3.1.6.13 | Discount Update/Printing |  | 2d | 2013-12-26 | 2013-12-27 | 101 | 2013-10-18 | 2013-10-21 | 1.5d | 0d |  |  | Jenny.Gao | 16h | SE | Middle | 设计阶段 | 文档撰写 | 全新功能/全新逻辑 | Other | Process |
| 103 | 1.3.1.6.14 | Invoice Journal Entry |  | 5d | 2013-12-30 | 2014-01-03 | 102 | 2013-09-25 | 2013-09-30 | 3d | 0d |  |  | Jenny.Gao | 40h | SE | Middle | 设计阶段 | 文档撰写 | 全新功能/全新逻辑 | Other | Process |
| 104 | 1.3.1.6.15 | Posted RT/Invoice Void |  | 3d | 2014-01-06 | 2014-01-08 | 103 | 2013-10-22 | 2013-10-23 | 2d | 0d |  |  | Jenny.Gao | 24h | SE | Middle | 设计阶段 | 文档撰写 | 全新功能/全新逻辑 | Other | Process |
| 105 | 1.3.1.6.16 | Payment Price Discount and Deduct |  | 5d | 2014-01-09 | 2014-01-15 | 104 | 2013-10-09 | 2013-10-14 | 3d | 0d |  |  | Jenny.Gao | 40h | SE | Middle | 设计阶段 | 文档撰写 | 全新功能/全新逻辑 | Other | Process |

| ID | WBS | Task | Type | Duration | Start | Finish | Predecessors | Baseline start | Baseline finish | Baseline duration | Total slack | Free slack | Constraint | Resources | Work | Text1 | Text2 | Text3 | Text4 | Text5 | Text6 | Text7 |
| --- | --- | --- | --- | --- | --- | --- | --- | --- | --- | --- | --- | --- | --- | --- | --- | --- | --- | --- | --- | --- | --- | --- |
| 106 | 1.3.1.7 | **Report - PIS** |  | 6d | 2014-01-16 | 2014-01-23 |  | 2013-10-24 | 2013-10-31 | 6d | 0d |  |  | Jenny.Gao | 96h | SE | Low | 设计阶段 | 文档撰写 | 全新功能/全新逻辑 | Other | Report |
| 107 | 1.3.1.7.1 | P Trans Not Post Aging Report |  | 1d | 2014-01-16 | 2014-01-16 | 105 | 2013-10-24 | 2013-10-24 | 1d | 0d |  |  | Jenny.Gao | 8h | SE | Low | 设计阶段 | 文档撰写 | 全新功能/全新逻辑 | Other | Report |
| 108 | 1.3.1.7.2 | AP Balanced Report |  | 1d | 2014-01-17 | 2014-01-17 | 107 | 2013-10-25 | 2013-10-25 | 1d | 0d |  |  | Jenny.Gao | 8h | SE | Low | 设计阶段 | 文档撰写 | 全新功能/全新逻辑 | Other | Report |
| 109 | 1.3.1.7.3 | Payment Price Confirm Report |  | 1d | 2014-01-20 | 2014-01-20 | 108 | 2013-10-28 | 2013-10-28 | 1d | 0d |  |  | Jenny.Gao | 8h | SE | Low | 设计阶段 | 文档撰写 | 全新功能/全新逻辑 | Other | Report |
| 110 | 1.3.1.7.4 | Transaction List Report |  | 1d | 2014-01-21 | 2014-01-21 | 109 | 2013-10-29 | 2013-10-29 | 1d | 0d |  |  | Jenny.Gao | 8h | SE | Low | 设计阶段 | 文档撰写 | 全新功能/全新逻辑 | Other | Report |
| 111 | 1.3.1.7.5 | VP Report By Facility |  | 1d | 2014-01-22 | 2014-01-22 | 110 | 2013-10-30 | 2013-10-30 | 1d | 0d |  |  | Jenny.Gao | 8h | SE | Low | 设计阶段 | 文档撰写 | 全新功能/全新逻辑 | Other | Report |
| 112 | 1.3.1.7.6 | Vendor Transaction List |  | 1d | 2014-01-23 | 2014-01-23 | 111 | 2013-10-31 | 2013-10-31 | 1d | 0d |  |  | Jenny.Gao | 8h | SE | Low | 设计阶段 | 文档撰写 | 全新功能/全新逻辑 | Other | Report |
| 113 | 1.3.1.8 | **Inquiry - PIS** |  | 6d | 2014-01-24 | 2014-01-31 |  | 2013-10-31 | 2013-11-08 | 6d | 0d |  |  | Jenny.Gao | 96h | SE | Low | 设计阶段 | 文档撰写 | 全新功能/全新逻辑 | Other | Inquiry |
| 114 | 1.3.1.8.1 | AP Balance Inquiry |  | 1d | 2014-01-24 | 2014-01-24 | 112 | 2013-10-31 | 2013-10-31 | 0d | 0d |  |  | Jenny.Gao | 8h | SE | Low | 设计阶段 | 文档撰写 | 全新功能/全新逻辑 | Other | Inquiry |
| 115 | 1.3.1.8.2 | Invoice File Inquiry |  | 1d | 2014-01-27 | 2014-01-27 | 114 | 2013-11-01 | 2013-11-01 | 1d | 0d |  |  | Jenny.Gao | 8h | SE | Low | 设计阶段 | 文档撰写 | 全新功能/全新逻辑 | Other | Inquiry |
| 116 | 1.3.1.8.3 | Journal Detail Inquiry |  | 1d | 2014-01-28 | 2014-01-28 | 115 | 2013-11-04 | 2013-11-04 | 1d | 0d |  |  | Jenny.Gao | 8h | SE | Low | 设计阶段 | 文档撰写 | 全新功能/全新逻辑 | Other | Inquiry |
| 117 | 1.3.1.8.4 | Journal Posting Error |  | 1d | 2014-01-29 | 2014-01-29 | 116 | 2013-11-05 | 2013-11-05 | 1d | 0d |  |  | Jenny.Gao | 8h | SE | Low | 设计阶段 | 文档撰写 | 全新功能/全新逻辑 | Other | Inquiry |
| 118 | 1.3.1.8.5 | Not Passed Daily Job | milestone | 0d | 2014-01-29 | 2014-01-29 | 117 | 2013-11-05 | 2013-11-05 | 0d | 0d |  |  | QCS Only |  | SE | Low | 设计阶段 | 文档撰写 | 全新功能/全新逻辑 | Other | Inquiry |
| 119 | 1.3.1.8.6 | Purchase Price Variance |  | 1d | 2014-01-30 | 2014-01-30 | 118 | 2013-11-06 | 2013-11-06 | 1d | 0d |  |  | Jenny | 8h | SE | Low | 设计阶段 | 文档撰写 | 全新功能/全新逻辑 | Other | Inquiry |
| 120 | 1.3.1.8.7 | AP VP Frozen Data Report | milestone | 0d | 2014-01-30 | 2014-01-30 | 119 | 2013-11-07 | 2013-11-07 | 1d | 0d |  |  | QCS Only |  | SE | Low | 设计阶段 | 文档撰写 | 全新功能/全新逻辑 | Other | Inquiry |
| 121 | 1.3.1.8.8 | Payment Price Confirm Inquiry |  | 1d | 2014-01-31 | 2014-01-31 | 120 | 2013-11-08 | 2013-11-08 | 1d | 0d |  |  | Jenny.Gao | 8h | SE | Low | 设计阶段 | 文档撰写 | 全新功能/全新逻辑 | Other | Inquiry |
| 122 | 1.3.2 | **RD Study review with PM** |  | 38d | 2013-12-12 | 2014-02-03 |  | 2013-08-29 | 2013-11-11 | 53d | 119d |  |  | Jenny.Gao | 424h | SE | Low | 设计阶段 | Review | 全新功能/全新逻辑 | Other | Other |
| 123 | 1.3.2.1 | Study Review 1 |  | 1d | 2013-12-12 | 2013-12-12 | 88 | 2013-08-29 | 2013-08-29 | 1d | 156d |  |  | Jenny; Jack; Celia | 24h | SE | Low | 设计阶段 | Review | 全新功能/全新逻辑 | Other | Other |
| 124 | 1.3.2.2 | Study Review 2 |  | 1d | 2013-12-26 | 2013-12-26 | 101 | 2013-09-18 | 2013-09-19 | 1d | 146d |  |  | Jenny; Jack; Celia | 24h | SE | Low | 设计阶段 | Review | 全新功能/全新逻辑 | Other | Other |
| 125 | 1.3.2.3 | Study Review 3 |  | 1d | 2014-01-16 | 2014-01-16 | 105 | 2013-09-30 | 2013-10-01 | 1d | 131d |  |  | Jenny; Jack; Celia | 24h | SE | Low | 设计阶段 | Review | 全新功能/全新逻辑 | Other | Other |
| 126 | 1.3.2.4 | Study Review 4 |  | 1d | 2014-01-24 | 2014-01-24 | 112 | 2013-10-24 | 2013-10-24 | 1d | 125d |  |  | Jenny; Jack; Celia | 24h | SE | Low | 设计阶段 | Review | 全新功能/全新逻辑 | Other | Other |
| 127 | 1.3.2.5 | Study Review 5 |  | 1d | 2014-02-03 | 2014-02-03 | 121 | 2013-11-01 | 2013-11-01 | 1d | 107d | 0d |  | Jenny; Jack; Celia | 24h | SE | Low | 设计阶段 | Review | 全新功能/全新逻辑 | Other | Other |
| 128 | 1.3.3 | UI Prototype for function difference development |  | 10d | 2014-02-04 | 2014-02-17 | 127 | 2013-11-11 | 2013-11-22 | 10d | 107d | 0d |  | Jenny.Gao | 80h | SE | Low | 设计阶段 | Prototype | 全新功能/全新逻辑 | Other | Other |
| 129 | 1.3.4 | PIS preparation |  | 15d | 2014-02-03 | 2014-02-21 | 113 | 2013-11-11 | 2013-11-29 | 15d | 0d |  | start no earlier than 2013-07-15 | Jenny.Gao | 120h | SE | Low | 设计阶段 | 文档撰写 | 全新功能/全新逻辑 | Other | Other |
| 130 | 1.3.5 | PIS Review |  | 1d | 2014-02-24 | 2014-02-24 | 129 | 2013-12-02 | 2013-12-02 | 1d | 0d |  |  | Celia; Jack; Jenny | 24h | SE | Low | 设计阶段 | Review | 全新功能/全新逻辑 | Other | Other |

| ID | WBS | Task | Duration | Start | Finish | Predecessors | Baseline start | Baseline finish | Baseline duration | Total slack | Free slack | Resources | Work | Text1 | Text2 | Text3 | Text4 | Text5 | Text6 | Text7 |
| --- | --- | --- | --- | --- | --- | --- | --- | --- | --- | --- | --- | --- | --- | --- | --- | --- | --- | --- | --- | --- |
| 131 | 1.4 | **Development** | 48d | 2014-02-25 | 2014-05-01 |  | 2013-12-03 | 2014-04-04 | 89d | 0d |  | Jenny.Gao | 2552h | SE | Middle | 开发阶段 | Business Coding | 全新功能/全新逻辑 | C# | Other |
| 132 | 1.4.1 | **Coding** | 47d | 2014-02-25 | 2014-04-30 |  | 2013-12-03 | 2014-04-03 | 88d | 0d |  | Jenny.Gao | 1728h | SE | Middle | 开发阶段 | Business Coding | 全新功能/全新逻辑 | C# | Other |
| 133 | 1.4.1.1 | **Maintain** | 5d | 2014-02-25 | 2014-03-03 | 130 | 2013-12-03 | 2013-12-19 | 13d | 0d |  | Jenny.Gao | 128h | SE | Middle | 开发阶段 | Business Coding | 全新功能/全新逻辑 | C# | Maintain |
| 134 | 1.4.1.1.1 | Account Table UI | 1d | 2014-02-25 | 2014-02-25 |  | 2013-12-03 | 2013-12-04 | 2d | 4d |  | Jenny.Gao | 8h | SE | Low | 开发阶段 | UI Coding | 全新功能/全新逻辑 | C# | Maintain |
| 135 | 1.4.1.1.2 | Account Table Business | 2d | 2014-02-25 | 2014-02-26 |  | 2013-12-03 | 2013-12-04 | 2d | 0d |  | Jenny.Gao | 16h | SE | Middle | 开发阶段 | Business Coding | 全新功能/全新逻辑 | C# | Maintain |
| 136 | 1.4.1.1.3 | Tax Rate Code UI | 1d | 2014-02-25 | 2014-02-25 |  | 2013-12-05 | 2013-12-06 | 2d | 4d |  | Jenny.Gao | 8h | SE | Low | 开发阶段 | UI Coding | 全新功能/全新逻辑 | C# | Maintain |
| 137 | 1.4.1.1.4 | Tax Rate Code Business | 2d | 2014-02-27 | 2014-02-28 | 135 | 2013-12-05 | 2013-12-06 | 2d | 0d |  | Jenny.Gao | 16h | SE | Middle | 开发阶段 | Business Coding | 全新功能/全新逻辑 | C# | Maintain |
| 138 | 1.4.1.1.5 | System Parameter UI | 1d | 2014-02-25 | 2014-02-25 |  | 2013-12-09 | 2013-12-09 | 1d | 4d |  | Jenny.Gao | 8h | SE | Low | 开发阶段 | UI Coding | 全新功能/全新逻辑 | C# | Maintain |
| 139 | 1.4.1.1.6 | System Parameter Business | 1d | 2014-03-03 | 2014-03-03 | 137 | 2013-12-09 | 2013-12-09 | 1d | 0d |  | Jenny.Gao | 8h | SE | Middle | 开发阶段 | Business Coding | 全新功能/全新逻辑 | C# | Maintain |
| 140 | 1.4.1.1.7 | Discount Vendor Master UI | 1d | 2014-02-25 | 2014-02-25 |  | 2013-12-12 | 2013-12-13 | 2d | 4d |  | Jenny.Gao | 8h | SE | Low | 开发阶段 | UI Coding | 全新功能/全新逻辑 | C# | Maintain |
| 141 | 1.4.1.1.8 | Discount Vendor Master Business | 2d | 2014-02-25 | 2014-02-26 |  | 2013-12-12 | 2013-12-13 | 2d | 3d | 0d | Jenny.Gao | 16h | SE | Middle | 开发阶段 | Business Coding | 全新功能/全新逻辑 | C# | Maintain |
| 142 | 1.4.1.2 | **Process** | 4d | 2014-03-04 | 2014-03-07 | 133 | 2013-12-20 | 2014-01-31 | 31d | 0d |  | Jenny.Gao | 216h | SE | Middle | 开发阶段 |  | 全新功能/全新逻辑 | C# | Process |
| 143 | 1.4.1.2.1 | Payment price confirm trigger UI | 2d | 2014-03-04 | 2014-03-05 |  | 2013-12-20 | 2013-12-23 | 2d | 2d |  | Jenny.Gao | 16h | SE | Low | 开发阶段 | UI Coding | 全新功能/全新逻辑 | C# | Process |
| 144 | 1.4.1.2.2 | Payment price confirm trigger Business | 2d | 2014-03-04 | 2014-03-05 |  | 2013-12-20 | 2013-12-23 | 2d | 0d |  | Jenny.Gao | 16h | SE | Middle | 开发阶段 | Business Coding | 全新功能/全新逻辑 | C# | Process |
| 145 | 1.4.1.2.3 | Frozen Cpcr Information for Month-End UI | 2d | 2014-03-04 | 2014-03-05 |  | 2013-12-24 | 2013-12-25 | 2d | 2d |  | Jenny.Gao | 16h | SE | Middle | 开发阶段 | UI Coding | 全新功能/全新逻辑 | C# | Process |
| 146 | 1.4.1.2.4 | Frozen Cpcr Information for Month-End Busiiness | 2d | 2014-03-06 | 2014-03-07 | 144 | 2013-12-24 | 2013-12-25 | 2d | 0d |  | Jenny.Gao | 16h | SE | Middle | 开发阶段 | Business Coding | 全新功能/全新逻辑 | C# | Process |
| 147 | 1.4.1.2.5 | AP Balance Month-End UI | 1d | 2014-03-04 | 2014-03-04 |  | 2013-12-27 | 2013-12-27 | 1d | 3d |  | Jenny.Gao | 8h | SE | Middle | 开发阶段 | UI Coding | 全新功能/全新逻辑 | C# | Process |
| 148 | 1.4.1.2.6 | AP Balance Month-End Business | 1d | 2014-03-04 | 2014-03-04 |  | 2013-12-27 | 2013-12-27 | 1d | 0d |  | Jenny.Gao | 8h | SE | Middle | 开发阶段 | Business Coding | 全新功能/全新逻辑 | C# | Process |
| 149 | 1.4.1.2.7 | Invoice Journal Entry UI | 2d | 2014-03-04 | 2014-03-05 |  | 2013-12-30 | 2014-01-03 | 5d | 2d |  | Jenny.Gao | 16h | SE | High | 开发阶段 | UI Coding | 全新功能/全新逻辑 | C# | Process |
| 150 | 1.4.1.2.8 | Invoice Journal Entry Business | 3d | 2014-03-05 | 2014-03-07 | 148 | 2013-12-30 | 2014-01-03 | 5d | 0d |  | Jenny.Gao | 24h | SE | High | 开发阶段 | Business Coding | 全新功能/全新逻辑 | C# | Process |
| 151 | 1.4.1.2.9 | Discount Form Clear UI | 2d | 2014-03-04 | 2014-03-05 |  | 2014-01-20 | 2014-01-21 | 2d | 2d |  | Jenny.Gao | 16h | SE | Middle | 开发阶段 | UI Coding | 全新功能/全新逻辑 | C# | Process |
| 152 | 1.4.1.2.10 | Discount Form Clear Business | 2d | 2014-03-04 | 2014-03-05 |  | 2014-01-20 | 2014-01-21 | 2d | 2d | 0d | Jenny.Gao | 16h | SE | High | 开发阶段 | Business Coding | 全新功能/全新逻辑 | C# | Process |
| 153 | 1.4.1.2.11 | Posted RT/Invoice Void UI | 1d | 2014-03-04 | 2014-03-04 |  | 2014-01-29 | 2014-01-31 | 3d | 3d |  | Jenny.Gao | 8h | SE | Middle | 开发阶段 | UI Coding | 全新功能/全新逻辑 | C# | Process |
| 154 | 1.4.1.2.12 | Posted RT/Invoice Void Business | 3d | 2014-03-04 | 2014-03-06 |  | 2014-01-29 | 2014-01-31 | 3d | 1d | 0d | Jenny.Gao | 24h | SE | High | 开发阶段 | Business Coding | 全新功能/全新逻辑 | C# | Process |

| ID | WBS | Task | Type | Duration | Start | Finish | Predecessors | Baseline start | Baseline finish | Baseline duration | Total slack | Resources | Work | Text1 | Text2 | Text3 | Text4 | Text5 | Text6 | Text7 |
| --- | --- | --- | --- | --- | --- | --- | --- | --- | --- | --- | --- | --- | --- | --- | --- | --- | --- | --- | --- | --- |
| 155 | 1.4.1.3 | **Report** |  | 32d | 2014-03-10 | 2014-04-22 | 142 | 2014-02-03 | 2014-03-18 | 32d | 0d | Jenny.Gao | 768h | SE | Middle | 开发阶段 | Business Coding | 全新功能/全新逻辑 | C# | Report |
| 156 | 1.4.1.3.1 | P Trans Not Post Aging Report UI |  | 2d | 2014-03-10 | 2014-03-11 |  | 2014-02-03 | 2014-02-04 | 2d | 30d | Jenny.Gao | 16h | SE | Middle | 开发阶段 | UI Coding | 全新功能/全新逻辑 | C# | Report |
| 157 | 1.4.1.3.2 | P Trans Not Post Aging Report Business |  | 2d | 2014-03-10 | 2014-03-11 |  | 2014-02-03 | 2014-02-04 | 2d | 0d | Jenny.Gao | 16h | SE | High | 开发阶段 | Business Coding | 全新功能/全新逻辑 | C# | Report |
| 158 | 1.4.1.3.3 | AP Balanced Report UI |  | 2d | 2014-03-12 | 2014-03-13 | 157 | 2014-02-05 | 2014-02-06 | 2d | 0d | Jenny.Gao | 16h | SE | Middle | 开发阶段 | UI Coding | 全新功能/全新逻辑 | C# | Report |
| 159 | 1.4.1.3.4 | AP Balanced Report Business |  | 2d | 2014-03-10 | 2014-03-11 |  | 2014-02-05 | 2014-02-06 | 2d | 30d | Jenny.Gao | 16h | SE | High | 开发阶段 | Business Coding | 全新功能/全新逻辑 | C# | Report |
| 160 | 1.4.1.3.5 | Payment Price Confirm Report UI |  | 2d | 2014-03-10 | 2014-03-11 |  | 2014-02-07 | 2014-02-10 | 2d | 30d | Jenny.Gao | 16h | SE | Middle | 开发阶段 | UI Coding | 全新功能/全新逻辑 | C# | Report |
| 161 | 1.4.1.3.6 | Payment Price Confirm Report Business |  | 2d | 2014-03-14 | 2014-03-17 | 158 | 2014-02-07 | 2014-02-10 | 2d | 0d | Jenny.Gao | 16h | SE | High | 开发阶段 | Business Coding | 全新功能/全新逻辑 | C# | Report |
| 162 | 1.4.1.3.7 | Transaction List Report UI |  | 2d | 2014-03-10 | 2014-03-11 |  | 2014-02-11 | 2014-02-12 | 2d | 30d | Jenny.Gao | 16h | SE | Middle | 开发阶段 | UI Coding | 全新功能/全新逻辑 | C# | Report |
| 163 | 1.4.1.3.8 | Transaction List Report Business |  | 2d | 2014-03-18 | 2014-03-19 | 161 | 2014-02-11 | 2014-02-12 | 2d | 0d | Jenny.Gao | 16h | SE | High | 开发阶段 | Business Coding | 全新功能/全新逻辑 | C# | Report |
| 164 | 1.4.1.3.9 | VP Report By Facility UI |  | 2d | 2014-03-10 | 2014-03-11 |  | 2014-02-13 | 2014-02-14 | 2d | 30d | Jenny.Gao | 16h | SE | Middle | 开发阶段 | UI Coding | 全新功能/全新逻辑 | C# | Report |
| 165 | 1.4.1.3.10 | VP Report By Facility Business |  | 2d | 2014-03-20 | 2014-03-21 | 163 | 2014-02-13 | 2014-02-14 | 2d | 0d | Jenny.Gao | 16h | SE | High | 开发阶段 | Business Coding | 全新功能/全新逻辑 | C# | Report |
| 166 | 1.4.1.3.11 | Vendor Transaction List UI |  | 22d | 2014-03-10 | 2014-04-08 |  | 2014-02-17 | 2014-03-18 | 22d | 10d | Jenny.Gao | 176h | SE | Middle | 开发阶段 | UI Coding | 全新功能/全新逻辑 | C# | Report |
| 167 | 1.4.1.3.12 | Vendor Transaction List Business |  | 22d | 2014-03-24 | 2014-04-22 | 165 | 2014-02-17 | 2014-03-18 | 22d | 0d | Jenny.Gao | 176h | SE | High | 开发阶段 | Business Coding | 全新功能/全新逻辑 | C# | Report |
| 168 | 1.4.1.4 | **Inquiry** |  | 6d | 2014-04-22 | 2014-04-30 | 155 | 2014-03-18 | 2014-04-03 | 12d | 0d | Jenny.Gao | 240h | SE | High | 开发阶段 | Business Coding | 全新功能/全新逻辑 | C# | Inquiry |
| 169 | 1.4.1.4.1 | AP Balance Inquiry UI | milestone | 0d | 2014-04-22 | 2014-04-22 |  | 2014-03-18 | 2014-03-18 | 0d | 62d | Jenny.Gao |  | SE | Middle | 开发阶段 | UI Coding | 全新功能/全新逻辑 | C# | Inquiry |
| 170 | 1.4.1.4.2 | AP Balance Inquiry Business | milestone | 0d | 2014-04-22 | 2014-04-22 |  | 2014-03-18 | 2014-03-18 | 0d | 0d | Jenny.Gao |  | SE | High | 开发阶段 | Business Coding | 全新功能/全新逻辑 | C# | Inquiry |
| 171 | 1.4.1.4.3 | Invoice File Inquiry UI |  | 2d | 2014-04-23 | 2014-04-24 |  | 2014-03-19 | 2014-03-20 | 2d | 60d | Jenny.Gao | 16h | SE | Middle | 开发阶段 | UI Coding | 全新功能/全新逻辑 | C# | Inquiry |
| 172 | 1.4.1.4.4 | Invoice File Inquiry Business |  | 2d | 2014-04-23 | 2014-04-24 | 170 | 2014-03-19 | 2014-03-20 | 2d | 0d | Jenny.Gao | 16h | SE | High | 开发阶段 | Business Coding | 全新功能/全新逻辑 | C# | Inquiry |
| 173 | 1.4.1.4.5 | Journal Detail Inquiry UI |  | 2d | 2014-04-23 | 2014-04-24 |  | 2014-03-21 | 2014-03-24 | 2d | 60d | Jenny.Gao | 16h | SE | Middle | 开发阶段 | UI Coding | 全新功能/全新逻辑 | C# | Inquiry |
| 174 | 1.4.1.4.6 | Journal Detail Inquiry Business |  | 2d | 2014-04-25 | 2014-04-28 | 172 | 2014-03-21 | 2014-03-24 | 2d | 0d | Jenny.Gao | 16h | SE | High | 开发阶段 | Business Coding | 全新功能/全新逻辑 | C# | Inquiry |
| 175 | 1.4.1.4.7 | Journal Posting Error UI |  | 2d | 2014-04-23 | 2014-04-24 |  | 2014-03-25 | 2014-03-26 | 2d | 60d | Jenny.Gao | 16h | SE | Middle | 开发阶段 | UI Coding | 全新功能/全新逻辑 | C# | Inquiry |
| 176 | 1.4.1.4.8 | Journal Posting Error Business |  | 2d | 2014-04-29 | 2014-04-30 | 174 | 2014-03-25 | 2014-03-26 | 2d | 0d | Jenny.Gao | 16h | SE | High | 开发阶段 | Business Coding | 全新功能/全新逻辑 | C# | Inquiry |
| 177 | 1.4.1.4.9 | Not Passed Daily Job UI | milestone | 0d | 2014-04-22 | 2014-04-22 |  | 2014-03-26 | 2014-03-26 | 0d | 62d | QCS Only |  | SE | Middle | 开发阶段 | UI Coding | 全新功能/全新逻辑 | C# | Inquiry |
| 178 | 1.4.1.4.10 | Not Passed Daily Job Business | milestone | 0d | 2014-04-22 | 2014-04-22 |  | 2014-03-26 | 2014-03-26 | 0d | 62d | QCS Only |  | SE | High | 开发阶段 | Business Coding | 全新功能/全新逻辑 | C# | Inquiry |
| 179 | 1.4.1.4.11 | Purchase Price Variance UI |  | 2d | 2014-04-23 | 2014-04-24 |  | 2014-03-27 | 2014-03-28 | 2d | 60d | QCS Only | 16h | SE | Middle | 开发阶段 | UI Coding | 全新功能/全新逻辑 | C# | Inquiry |
| 180 | 1.4.1.4.12 | Purchase Price Variance Business |  | 2d | 2014-04-23 | 2014-04-24 |  | 2014-03-27 | 2014-03-28 | 2d | 0d | QCS Only | 16h | SE | High | 开发阶段 | Business Coding | 全新功能/全新逻辑 | C# | Inquiry |
| 181 | 1.4.1.4.13 | AP VP Frozen Data Report UI |  | 2d | 2014-04-23 | 2014-04-24 |  | 2014-03-31 | 2014-04-01 | 2d | 60d | QCS Only | 16h | SE | Middle | 开发阶段 | UI Coding | 全新功能/全新逻辑 | C# | Inquiry |
| 182 | 1.4.1.4.14 | AP VP Frozen Data Report Business |  | 2d | 2014-04-25 | 2014-04-28 | 180 | 2014-03-31 | 2014-04-01 | 2d | 0d | QCS Only | 16h | SE | High | 开发阶段 | Business Coding | 全新功能/全新逻辑 | C# | Inquiry |
| 183 | 1.4.1.4.15 | Payment Price Confirm Inquiry UI |  | 2d | 2014-04-23 | 2014-04-24 |  | 2014-04-02 | 2014-04-03 | 2d | 60d | QCS Only | 16h | SE | Middle | 开发阶段 | UI Coding | 全新功能/全新逻辑 | C# | Inquiry |
| 184 | 1.4.1.4.16 | Payment Price Confirm Inquiry Business |  | 2d | 2014-04-29 | 2014-04-30 | 182 | 2014-04-02 | 2014-04-03 | 2d | 0d | QCS Only | 16h | SE | High | 开发阶段 | Business Coding | 全新功能/全新逻辑 | C# | Inquiry |

| ID | WBS | Task | Type | Duration | Start | Finish | Predecessors | Baseline start | Baseline finish | Baseline duration | Total slack | Resources | Work | Text1 | Text2 | Text3 | Text4 | Text5 | Text6 | Text7 |
| --- | --- | --- | --- | --- | --- | --- | --- | --- | --- | --- | --- | --- | --- | --- | --- | --- | --- | --- | --- | --- |
| 185 | 1.4.2 | **Code Review Plan** |  | 43d | 2014-03-04 | 2014-05-01 |  | 2013-12-20 | 2014-04-04 | 76d | 56d | QCS Only | 440h | SE | Low | 开发阶段 | Review | 全新功能/全新逻辑 | C# | Other |
| 186 | 1.4.2.1 | Code Review 1 |  | 1d | 2014-03-04 | 2014-03-04 | 133 | 2013-12-20 | 2013-12-20 | 1d | 98d | Celia; Jack; Jenny | 24h | SE | Low | 开发阶段 | Review | 全新功能/全新逻辑 | C# | Other |
| 187 | 1.4.2.2 | Code Review 2 |  | 1d | 2014-03-10 | 2014-03-10 | 142 | 2014-02-03 | 2014-02-03 | 1d | 94d | Celia; Jack; Jenny | 24h | SE | Low | 开发阶段 | Review | 全新功能/全新逻辑 | C# | Other |
| 188 | 1.4.2.3 | Code Review 3 |  | 1d | 2014-04-23 | 2014-04-23 | 155 | 2014-03-19 | 2014-03-19 | 1d | 62d | Celia; Jack; Jenny | 24h | SE | Low | 开发阶段 | Review | 全新功能/全新逻辑 | C# | Other |
| 189 | 1.4.2.4 | Code Review 4 |  | 1d | 2014-05-01 | 2014-05-01 | 168 | 2014-04-04 | 2014-04-04 | 1d | 56d | Celia; Jack; Jenny | 24h | SE | Low | 开发阶段 | Review | 全新功能/全新逻辑 | C# | Other |
| 190 | 1.5 | **QA Test** |  | 299d? | 2013-03-12 | 2014-05-02 |  | 2013-12-05 | 2014-04-07 | 88d? | 55d | Celia | 9592h | SE | Low | 测试阶段 | 功能测试 | 全新功能/全新逻辑 | Other | Other |
| 191 | 1.5.1 | **Maintain** |  | 255.5d? | 2013-03-12 | 2014-03-04 |  | 2013-12-05 | 2013-12-20 | 11.5d? | 98.5d | Sammi Yao | 2104h | SE | Low | 测试阶段 | 功能测试 | 全新功能/全新逻辑 | Other | Other |
| 192 | 1.5.1.1 | Account Table |  | 1d | 2014-02-27 | 2014-02-27 | 135 | 2013-12-05 | 2013-12-05 | 1d | 101d | QCS Only | 8h | SE | Low | 测试阶段 | 功能测试 | 全新功能/全新逻辑 | Other | Maintain |
| 193 | 1.5.1.2 | Tax Rate Code |  | 1d | 2014-03-03 | 2014-03-03 | 137 | 2013-12-09 | 2013-12-09 | 1d | 99d | QCS Only | 8h | SE | Low | 测试阶段 | 功能测试 | 全新功能/全新逻辑 | Other | Maintain |
| 194 | 1.5.1.3 | System Parameter |  | 0.5d | 2014-03-04 | 2014-03-04 | 139 | 2013-12-10 | 2013-12-10 | 0.5d | 98.5d | QCS Only | 4h | SE | Low | 测试阶段 | 功能测试 | 全新功能/全新逻辑 | Other | Maintain |
| 195 | 1.5.1.4 | Trace Period Maintain |  | 1d? | 2013-03-12 | 2013-03-12 |  | 2013-12-12 | 2013-12-12 | 1d? | 353d | QCS Only | 8h | SE | Low | 测试阶段 | 功能测试 | 全新功能/全新逻辑 | Other | Maintain |
| 196 | 1.5.1.5 | Discount Vendor Master |  | 2d | 2014-02-27 | 2014-02-28 | 141 | 2013-12-16 | 2013-12-17 | 2d | 100d | Sammi Yao | 16h | SE | Low | 测试阶段 | 功能测试 | 全新功能/全新逻辑 | Other | Maintain |
| 197 | 1.5.1.6 | Facility/Dept. Mapping |  | 1d | 2013-03-12 | 2013-03-12 |  | 2013-12-18 | 2013-12-18 | 1d | 353d | Sammi Yao | 8h | SE | Low | 测试阶段 | 功能测试 | 全新功能/全新逻辑 | Other | Maintain |
| 198 | 1.5.1.7 | Parameter Data Input |  | 0.5d | 2013-03-12 | 2013-03-12 |  | 2013-12-19 | 2013-12-19 | 0.5d | 353.5d | Sammi Yao | 4h | SE | Low | 测试阶段 | 功能测试 | 全新功能/全新逻辑 | Other | Maintain |
| 199 | 1.5.1.8 | AP Report Raw Data Collection |  | 0.5d | 2013-03-12 | 2013-03-12 |  | 2013-12-20 | 2013-12-20 | 0.5d | 353.5d | Sammi Yao | 4h | SE | Low | 测试阶段 | 功能测试 | 全新功能/全新逻辑 | Other | Maintain |
| 200 | 1.5.2 | **Process** |  | 264d | 2013-03-12 | 2014-03-14 |  | 2013-12-24 | 2014-02-05 | 32d | 90d | Sammi Yao | 2360h | SE | Middle | 测试阶段 | 功能测试 | 全新功能/全新逻辑 | Other | Process |
| 201 | 1.5.2.1 | Payment price confirm trigger |  | 2d | 2014-03-06 | 2014-03-07 | 144 | 2013-12-24 | 2013-12-25 | 2d | 95d | QCS Only | 16h | SE | Middle | 测试阶段 | 功能测试 | 全新功能/全新逻辑 | Other | Process |
| 202 | 1.5.2.2 | Frozen Cpcr Information for Month-End |  | 1d | 2014-03-10 | 2014-03-10 | 146 | 2013-12-26 | 2013-12-26 | 1d | 94d | QCS Only | 8h | SE | Middle | 测试阶段 | 功能测试 | 全新功能/全新逻辑 | Other | Process |
| 203 | 1.5.2.3 | Frozen Un-Posted APH for Month-End |  | 1d | 2013-03-12 | 2013-03-12 |  | 2013-12-27 | 2013-12-27 | 1d | 353d | QCS Only | 8h | SE | Middle | 测试阶段 | 功能测试 | 全新功能/全新逻辑 | Other | Process |
| 204 | 1.5.2.4 | Customs Declaration Accept | milestone | 0d | 2013-03-12 | 2013-03-12 |  | 2013-12-26 | 2013-12-26 | 0d | 354d | QCS Only |  | SE | Middle | 测试阶段 | 功能测试 | 全新功能/全新逻辑 | Other | Process |
| 205 | 1.5.2.5 | AP Balance Month-End |  | 1d | 2014-03-05 | 2014-03-05 | 148 | 2013-12-30 | 2013-12-30 | 1d | 97d | QCS Only | 8h | SE | Middle | 测试阶段 | 功能测试 | 全新功能/全新逻辑 | Other | Process |
| 206 | 1.5.2.6 | Invoice Journal Entry |  | 5d | 2014-03-10 | 2014-03-14 | 150 | 2014-01-06 | 2014-01-10 | 5d | 90d | QCS Only | 40h | SE | Middle | 测试阶段 | 功能测试 | 全新功能/全新逻辑 | Other | Process |
| 207 | 1.5.2.7 | Manual Control For Batch |  | 1d | 2013-03-12 | 2013-03-12 |  | 2014-01-07 | 2014-01-07 | 1d | 353d | QCS Only | 8h | SE | Middle | 测试阶段 | 功能测试 | 全新功能/全新逻辑 | Other | Process |
| 208 | 1.5.2.8 | Transaction Error Recover Process |  | 2d | 2013-03-12 | 2013-03-13 |  | 2014-01-09 | 2014-01-10 | 2d | 352d | QCS Only | 16h | SE | Middle | 测试阶段 | 功能测试 | 全新功能/全新逻辑 | Other | Process |
| 209 | 1.5.2.9 | White List Accept |  | 2d | 2013-03-12 | 2013-03-13 |  | 2014-01-10 | 2014-01-13 | 2d | 352d | QCS Only | 16h | SE | Middle | 测试阶段 | 功能测试 | 全新功能/全新逻辑 | Other | Process |
| 210 | 1.5.2.10 | Send Vendor EDI |  | 3d | 2013-03-12 | 2013-03-14 |  | 2014-01-15 | 2014-01-17 | 3d | 351d | QCS Only | 24h | SE | Middle | 测试阶段 | 功能测试 | 全新功能/全新逻辑 | Other | Process |
| 211 | 1.5.2.11 | Payment Price Discount and Deduct |  | 4d | 2013-03-12 | 2013-03-15 |  | 2014-01-20 | 2014-01-23 | 4d | 350d | QCS Only | 32h | SE | Middle | 测试阶段 | 功能测试 | 全新功能/全新逻辑 | Other | Process |
| 212 | 1.5.2.12 | Notice Sourcer Manager to Approve | milestone | 0d | 2013-03-12 | 2013-03-12 |  | 2014-01-17 | 2014-01-17 | 0d | 354d | QCS Only |  | SE | Middle | 测试阶段 | 功能测试 | 全新功能/全新逻辑 | Other | Process |
| 213 | 1.5.2.13 | Discount Form Clear |  | 2d | 2014-03-06 | 2014-03-07 | 152 | 2014-01-22 | 2014-01-23 | 2d | 95d | QCS Only | 16h | SE | Middle | 测试阶段 | 功能测试 | 全新功能/全新逻辑 | Other | Process |
| 214 | 1.5.2.14 | Change Posted/VR Invoice Number |  | 3d | 2013-03-12 | 2013-03-14 |  | 2014-01-27 | 2014-01-29 | 3d | 351d | QCS Only | 24h | SE | Middle | 测试阶段 | 功能测试 | 全新功能/全新逻辑 | Other | Process |
| 215 | 1.5.2.15 | Discount Update/Printing |  | 1d | 2013-03-12 | 2013-03-12 |  | 2014-01-29 | 2014-01-29 | 1d | 353d | QCS Only | 8h | SE | Middle | 测试阶段 | 功能测试 | 全新功能/全新逻辑 | Other | Process |
| 216 | 1.5.2.16 | Posted RT/Invoice Void |  | 3d | 2014-03-07 | 2014-03-11 | 154 | 2014-02-03 | 2014-02-05 | 3d | 93d | QCS Only | 24h | SE | Middle | 测试阶段 | 功能测试 | 全新功能/全新逻辑 | Other | Process |

| ID | WBS | Task | Type | Duration | Start | Finish | Predecessors | Baseline start | Baseline finish | Baseline duration | Total slack | Free slack | Resources | Work | Text1 | Text2 | Text3 | Text4 | Text5 | Text6 | Text7 |
| --- | --- | --- | --- | --- | --- | --- | --- | --- | --- | --- | --- | --- | --- | --- | --- | --- | --- | --- | --- | --- | --- |
| 217 | 1.5.3 | **Report** |  | 31d | 2014-03-12 | 2014-04-23 |  | 2014-02-05 | 2014-03-19 | 31d | 62d |  | QCS Only | 296h | SE | Low | 测试阶段 | 功能测试 | 全新功能/全新逻辑 | Other | Report |
| 218 | 1.5.3.1 | P Trans Not Post Aging Report |  | 1d | 2014-03-12 | 2014-03-12 | 157 | 2014-02-05 | 2014-02-05 | 1d | 92d |  | QCS Only | 8h | SE | Low | 测试阶段 | 功能测试 | 全新功能/全新逻辑 | Other | Report |
| 219 | 1.5.3.2 | AP Balanced Report |  | 1d | 2014-03-14 | 2014-03-14 | 158 | 2014-02-07 | 2014-02-07 | 1d | 90d |  | QCS Only | 8h | SE | Low | 测试阶段 | 功能测试 | 全新功能/全新逻辑 | Other | Report |
| 220 | 1.5.3.3 | Payment Price Confirm Report |  | 1d | 2014-03-18 | 2014-03-18 | 161 | 2014-02-11 | 2014-02-11 | 1d | 88d |  | QCS Only | 8h | SE | Low | 测试阶段 | 功能测试 | 全新功能/全新逻辑 | Other | Report |
| 221 | 1.5.3.4 | Transaction List Report |  | 1d | 2014-03-20 | 2014-03-20 | 163 | 2014-02-13 | 2014-02-13 | 1d | 86d |  | QCS Only | 8h | SE | Low | 测试阶段 | 功能测试 | 全新功能/全新逻辑 | Other | Report |
| 222 | 1.5.3.5 | VP Report By Facility |  | 1d | 2014-03-24 | 2014-03-24 | 165 | 2014-02-17 | 2014-02-17 | 1d | 84d |  | QCS Only | 8h | SE | Low | 测试阶段 | 功能测试 | 全新功能/全新逻辑 | Other | Report |
| 223 | 1.5.3.6 | Vendor Transaction List |  | 1d | 2014-04-23 | 2014-04-23 | 167 | 2014-03-19 | 2014-03-19 | 1d | 62d |  | QCS Only | 8h | SE | Low | 测试阶段 | 功能测试 | 全新功能/全新逻辑 | Other | Report |
| 224 | 1.5.4 | **Inquiry** |  | 298d | 2013-03-12 | 2014-05-01 |  | 2014-03-18 | 2014-04-04 | 13d | 0d |  | QCS Only | 2432h | SE | Low | 测试阶段 | 功能测试 | 全新功能/全新逻辑 | Other | Inquiry |
| 225 | 1.5.4.1 | AP Balance Inquiry | milestone | 0d | 2014-04-22 | 2014-04-22 | 170 | 2014-03-18 | 2014-03-18 | 0d | 7d |  | QCS Only |  | SE | Low | 测试阶段 | 功能测试 | 全新功能/全新逻辑 | Other | Inquiry |
| 226 | 1.5.4.2 | Invoice File Inquiry |  | 1d | 2014-04-25 | 2014-04-25 | 172 | 2014-03-21 | 2014-03-21 | 1d | 4d |  | QCS Only | 8h | SE | Low | 测试阶段 | 功能测试 | 全新功能/全新逻辑 | Other | Inquiry |
| 227 | 1.5.4.3 | Journal Detail Inquiry |  | 1d | 2014-04-29 | 2014-04-29 | 174 | 2014-03-25 | 2014-03-25 | 1d | 2d |  | QCS Only | 8h | SE | Low | 测试阶段 | 功能测试 | 全新功能/全新逻辑 | Other | Inquiry |
| 228 | 1.5.4.4 | Journal Posting Error |  | 1d | 2014-05-01 | 2014-05-01 | 176 | 2014-03-27 | 2014-03-27 | 1d | 0d |  | QCS Only | 8h | SE | Low | 测试阶段 | 功能测试 | 全新功能/全新逻辑 | Other | Inquiry |
| 229 | 1.5.4.5 | Not Passed Daily Job | milestone | 0d | 2013-03-12 | 2013-03-12 |  | 2014-03-26 | 2014-03-26 | 0d | 298d |  | QCS Only |  | SE | Low | 测试阶段 | 功能测试 | 全新功能/全新逻辑 | Other | Inquiry |
| 230 | 1.5.4.6 | Purchase Price Variance |  | 1d | 2014-04-25 | 2014-04-25 | 180 | 2014-03-31 | 2014-03-31 | 1d | 4d |  | QCS Only | 8h | SE | Low | 测试阶段 | 功能测试 | 全新功能/全新逻辑 | Other | Inquiry |
| 231 | 1.5.4.7 | AP VP Frozen Data Report |  | 1d | 2014-04-29 | 2014-04-29 | 182 | 2014-04-02 | 2014-04-02 | 1d | 2d |  | QCS Only | 8h | SE | Low | 测试阶段 | 功能测试 | 全新功能/全新逻辑 | Other | Inquiry |
| 232 | 1.5.4.8 | Payment Price Confirm Inquiry |  | 1d | 2014-05-01 | 2014-05-01 | 184 | 2014-04-04 | 2014-04-04 | 1d | 0d |  | Jack | 8h | SE | Low | 测试阶段 | 功能测试 | 全新功能/全新逻辑 | Other | Inquiry |
| 233 | 1.5.5 | Release Note |  | 1d | 2014-05-02 | 2014-05-02 | 232 | 2014-04-07 | 2014-04-07 | 1d | 55d | 0d | Sammi Yao | 8h | SE | Low | Release阶段 | 文档撰写 | 全新功能/全新逻辑 | Other | Other |
| 234 | 1.6 | **PM Test** |  | 20d | 2014-05-02 | 2014-05-29 |  | 2014-04-07 | 2014-05-02 | 20d | 0d |  | Jenny | 480h | SE | Middle | 测试阶段 | 功能测试 | 全新功能/全新逻辑 | Other | Other |
| 235 | 1.6.1 | QTY Test |  | 20d | 2014-05-02 | 2014-05-29 | 224 | 2014-04-07 | 2014-05-02 | 20d | 0d |  | Jack | 160h | SE | Middle | 测试阶段 | 功能测试 | 全新功能/全新逻辑 | Other | Other |
| 236 | 1.6.2 | QCS Test |  | 20d | 2014-05-02 | 2014-05-29 | 224 | 2014-04-07 | 2014-05-02 | 20d | 0d |  | Celia | 160h | SE | Middle | 测试阶段 | 功能测试 | 全新功能/全新逻辑 | Other | Other |
| 237 | 1.7 | **UAT** |  | 27d | 2014-05-30 | 2014-07-07 |  | 2014-05-05 | 2014-06-10 | 27d | 0d |  | Jack | 608h | SE | Low | 上线实施阶段 | Other | 全新功能/全新逻辑 | Other | Other |
| 238 | 1.7.1 | USM for system difference |  | 5d | 2014-05-30 | 2014-06-05 | 234 | 2014-05-05 | 2014-05-09 | 5d | 0d |  | Jack | 40h | SE | Low | 上线实施阶段 | Other | 全新功能/全新逻辑 | Other | Other |
| 239 | 1.7.2 | User Training |  | 2d | 2014-06-06 | 2014-06-09 | 238 | 2014-05-12 | 2014-05-13 | 2d | 0d |  | Celia; Jack | 32h | SE | Low | 上线实施阶段 | Other | 全新功能/全新逻辑 | Other | Other |
| 240 | 1.7.3 | QTY UAT |  | 20d | 2014-06-10 | 2014-07-07 | 239 | 2014-05-14 | 2014-06-10 | 20d | 9d |  | Jack | 160h | SE | Low | 上线实施阶段 | Other | 全新功能/全新逻辑 | Other | Other |
| 241 | 1.7.4 | QCS UAT |  | 20d | 2014-06-10 | 2014-07-07 | 239 | 2014-05-14 | 2014-06-10 | 20d | 0d |  | Celia | 160h | SE | Low | 上线实施阶段 | Other | 全新功能/全新逻辑 | Other | Other |
| 242 | 1.8 | System Fin Tune |  | 5d | 2014-07-08 | 2014-07-14 | 241 | 2014-06-11 | 2014-06-17 | 5d | 0d |  | Jenny | 40h | SE | Low | 上线实施阶段 | Other | 全新功能/全新逻辑 | Other | Other |
| 243 | 1.9 | Production Environment Deployment |  | 2d | 2014-07-15 | 2014-07-16 | 242 | 2014-06-18 | 2014-06-19 | 2d | 0d |  | Jack; Celia | 32h | SE | Low | 上线实施阶段 | Other | 全新功能/全新逻辑 | Other | Other |

| ID | WBS | Task | Type | Duration | Start | Finish | Predecessors | Baseline start | Baseline finish | Baseline duration | Total slack | Constraint | Resources | Work | Text1 | Text2 | Text3 | Text4 | Text5 | Text6 | Text7 |
| --- | --- | --- | --- | --- | --- | --- | --- | --- | --- | --- | --- | --- | --- | --- | --- | --- | --- | --- | --- | --- | --- |
| 244 | 1.10 | **System Implement** |  | 2d | 2014-07-17 | 2014-07-18 |  | 2014-06-20 | 2014-06-23 | 2d | 0d |  | Celia | 32h | SE | Low | 上线实施阶段 | Other | 全新功能/全新逻辑 | Other | Other |
| 245 | 1.10.1 | QTY |  | 1d | 2014-07-17 | 2014-07-17 | 243 | 2014-06-20 | 2014-06-20 | 1d | 0d | start no earlier than 2014-06-20 | Jack | 8h | SE | Low | 上线实施阶段 | Other | 全新功能/全新逻辑 | Other | Other |
| 246 | 1.10.2 | QCS |  | 1d | 2014-07-18 | 2014-07-18 | 245 | 2014-06-23 | 2014-06-23 | 1d | 0d | start no earlier than 2014-04-14 | Celia | 8h | SE | Low | 上线实施阶段 | Other | 全新功能/全新逻辑 | Other | Other |
| 247 | 1.11 | Go Live | milestone | 0d | 2014-07-18 | 2014-07-18 | 246 | 2014-06-23 | 2014-06-23 | 0d | 0d | start no earlier than 2014-04-14 | Celia; Jack; Jenny |  | SE | Low | 上线实施阶段 | Other | 全新功能/全新逻辑 | Other | Other |
